Schedule from MS Project, 2026-04-17 to 2026-07-06, costs in COP.
Microsoft

## Calendars

- Cerebrum: Mon-Fri 09:00-13:00, 15:00-19:00; Sat-Sun off. Exceptions (off unless hours are given): 2026-05-01 (Dia del trabajo), 2026-05-18 (Día de la Ascensión), 2026-06-08 (Corpus Christi), 2026-06-15 (Sagrado Corazón), 2026-06-29 (San Pedro y San Pablo).

## Resources

| Resource | Rate |
| --- | --- |
| Kevin | 25000 |
| Gabriel | 25000 |
| Iván | 25000 |
| Johan | 25000 |
| Servidores (app nube) | 536000 |
| Licencias de Software | 244000 |
| Equipos de cómputo | 3500000 |
| Wifi |  |
| Servicios publicos |  |

## Schedule

| ID | WBS | Task | Type | Duration | Start | Finish | Total slack | Constraint | Resources | Work | Cost |
| --- | --- | --- | --- | --- | --- | --- | --- | --- | --- | --- | --- |
| 1 | 1 | **Cerebrum** |  | 50.25d | 2026-04-17 | 2026-07-06 | 0d |  |  | 2068h | 51,700,000 |
| 2 | 1.1 | INICIO | milestone | 0d | 2026-04-22 | 2026-04-22 | 48d | start no earlier than 2026-04-22 |  |  |  |
| 3 | 1.2 | **1. Planificación** |  | 10d | 2026-04-17 | 2026-05-04 | 40.25d |  |  | 320h | 8,000,000 |
| 4 | 1.2.1 | Metas generales del proyecto y alcance inicial |  | 10d | 2026-04-17 | 2026-05-04 | 40.25d | finish no earlier than 2026-05-04 | Gabriel; Kevin | 160h | 4,000,000 |
| 5 | 1.2.2 | Cronograma y asignación de tareas o responsabilidades | milestone | 0d | 2026-04-22 | 2026-04-22 | 48d |  |  |  |  |
| 6 | 1.2.3 | Identificación de los recursos necesarios |  | 10d | 2026-04-17 | 2026-05-04 | 40.25d | finish no earlier than 2026-05-04 | Johan; Iván | 160h | 4,000,000 |
| 7 | 1.3 | **2. Análisis** |  | 15d | 2026-05-05 | 2026-05-26 | 25d |  |  | 480h | 12,000,000 |
| 8 | 1.3.1 | problematica de los usuarios o del cliente. |  | 15d | 2026-05-05 | 2026-05-26 | 25d | start no earlier than 2026-05-05 | Kevin | 120h | 3,000,000 |
| 9 | 1.3.2 | Definición de requisitos funcionales |  | 15d | 2026-05-05 | 2026-05-26 | 25d | start no earlier than 2026-05-05 | Gabriel | 120h | 3,000,000 |
| 10 | 1.3.3 | Definición de requisitos no funcionales |  | 15d | 2026-05-05 | 2026-05-26 | 25d | start no earlier than 2026-05-05 | Iván | 120h | 3,000,000 |
| 11 | 1.3.4 | Elaboración de la documentación de requerimientos |  | 15d | 2026-05-05 | 2026-05-26 | 25d | start no earlier than 2026-05-05 | Johan | 120h | 3,000,000 |
| 12 | 1.4 | **3. Diseño** |  | 15d | 2026-05-27 | 2026-06-18 | 10d |  |  | 360h | 9,000,000 |
| 13 | 1.4.1 | Definición de la estructura general del software |  | 15d | 2026-05-27 | 2026-06-18 | 10d | start no earlier than 2026-05-27 | Kevin | 120h | 3,000,000 |
| 14 | 1.4.2 | Modelado de bases de datos y diagramas técnicos (UML). |  | 15d | 2026-05-27 | 2026-06-18 | 10d | start no earlier than 2026-05-27 | Gabriel | 120h | 3,000,000 |
| 15 | 1.4.3 | Diseño de interfaces de usuario (wireframes y prototipos) |  | 15d | 2026-05-27 | 2026-06-18 | 10d | start no earlier than 2026-05-27 | Iván | 120h | 3,000,000 |
| 16 | 1.5 | **4. Implementación** |  | 48d | 2026-04-22 | 2026-07-03 | 0d |  |  | 318h | 7,950,000 |
| 17 | 1.5.1 | Configuración del entorno de trabajo y control de versiones |  | 10d | 2026-06-19 | 2026-07-03 | 0d | start no earlier than 2026-06-19 | Kevin | 80h | 2,000,000 |
| 18 | 1.5.2 | Frontend |  | 10d | 2026-06-19 | 2026-07-03 | 0d | start no earlier than 2026-06-19 | Gabriel | 80h | 2,000,000 |
| 19 | 1.5.3 | Backend |  | 10d | 2026-06-19 | 2026-07-03 | 0d | start no earlier than 2026-06-19 | Iván | 80h | 2,000,000 |
| 20 | 1.5.4 | Creacion e integracion de módulos | milestone | 0d | 2026-04-22 | 2026-04-22 | 48d |  |  |  |  |
| 21 | 1.5.5 | Bases de datos |  | 10d | 2026-06-17 | 2026-07-02 | 1.25d | finish no earlier than 2026-07-02 | Johan [97.5%] | 78h | 1,950,000 |
| 22 | 1.6 | **5. Pruebas** |  | 48d | 2026-04-22 | 2026-07-03 | 0d |  |  | 318h | 7,950,000 |
| 23 | 1.6.1 | Pruebas unitarias |  | 10d | 2026-06-19 | 2026-07-03 | 0d | start no earlier than 2026-06-19 | Kevin | 80h | 2,000,000 |
| 24 | 1.6.2 | Pruebas de integración |  | 10d | 2026-06-19 | 2026-07-03 | 0d | start no earlier than 2026-06-19 | Gabriel | 80h | 2,000,000 |
| 25 | 1.6.3 | Pruebas de Usabilidad e interfaces responsivas |  | 10d | 2026-06-19 | 2026-07-03 | 0d | start no earlier than 2026-06-19 | Iván | 80h | 2,000,000 |
| 26 | 1.6.4 | Empaquetado móvil |  | 10d | 2026-06-17 | 2026-07-02 | 1.25d | finish no earlier than 2026-07-02 | Johan [97.5%] | 78h | 1,950,000 |
| 27 | 1.6.5 | Detección, reporte y corrección de errores o fallos antes de la entrega | milestone | 0d | 2026-04-22 | 2026-04-22 | 48d |  |  |  |  |

| ID | WBS | Task | Duration | Start | Finish | Total slack | Constraint | Resources | Work | Cost |
| --- | --- | --- | --- | --- | --- | --- | --- | --- | --- | --- |
| 28 | 1.7 | **6. Despliegue** | 17d | 2026-06-09 | 2026-07-06 | 0d |  |  | 272h | 6,800,000 |
| 29 | 1.7.1 | Configuración y planes de servidores , host | 10d | 2026-06-19 | 2026-07-03 | 0d | start no earlier than 2026-06-19 | Kevin | 80h | 2,000,000 |
| 30 | 1.7.2 | Lanzamiento oficial de la aplicación para que esté disponible para los usuarios | 14d | 2026-06-09 | 2026-06-30 | 3d | start no earlier than 2026-06-09 | Gabriel | 112h | 2,800,000 |
| 31 | 1.7.3 | Monitoreo inicial posterior al lanzamiento y soporte básico | 10d | 2026-06-19 | 2026-07-03 | 0d | start no earlier than 2026-06-19 | Iván | 80h | 2,000,000 |
